Assignee,Task ID,Task Name,Status,Start Date,End Date,Dependencies,Required For,Notes
▶ Beach Gas Appliance and Propane (1 items)
,propane-2,  ↳ Propane Line Remediation,scheduled,2026-01-23,2026-01-23,,,Dave coordinating and responsible. Dependency for siding install.
▶ Brandon (15 items)
,crest-installation-1,  ↳ Verify Install Time,needs-scheduled,2026-01-27,2026-01-27,,,
,finish-plumbing-1,  ↳ Schedule Finish Plumbing,needs-scheduled
,kitchen-baseboard-1,  ↳ Schedule Baseboard Install,needs-scheduled,2026-01-26,2026-01-26,,,
,finish-electrical-6,  ↳ Schedule Electrical Sign-off,needs-scheduled,2026-01-26,2026-01-26,,,
,siding-1,  ↳ Schedule Siding,needs-scheduled
,inspection,Inspection,needs-scheduled,,,,"close-permit, project-finish",
,inspection-1,  ↳ Schedule Town of Manteo,needs-scheduled
,inspection-2,  ↳ Schedule Dare County Health,needs-scheduled
,inspection-3,  ↳ Town of Manteo,needs-scheduled
,inspection-4,  ↳ Dare County Health,needs-scheduled
,upper-cabinet-install-2,  ↳ Schedule Installation,needs-scheduled,2026-01-26,2026-01-26,,,
,close-permit,Close Building Permit,needs-scheduled,,,inspection,project-finish,
,project-finish-1,  ↳ Schedule Final Punch Walkthrough,needs-scheduled,,,,,Coordinate with owner for walkthrough date/time.
,project-finish-3,  ↳ Punch List Remediation,needs-scheduled,,,,project-finish-4,GC addresses all documented punch items.
,project-finish-4,  ↳ Final Clean,needs-scheduled,,,project-finish-3,,
▶ Chris Bland (3 items)
,finish-plumbing,Finish Plumbing,needs-scheduled,,,crest-installation,"kitchen-put-back, kitchen-put-back-1",
,finish-plumbing-2,  ↳ Finish Plumbing,needs-scheduled
,finish-plumbing-3,  ↳ Install Existing Handsink in Laundry Room,needs-scheduled,,,,,Not part of Crest order.
▶ Craig Davenport (2 items)
,finish-electrical,Finish Electrical,scheduled,2026-01-26,2026-01-26,,crest-installation,
,finish-electrical-7,  ↳ Electrical Sign-off,needs-scheduled,2026-01-26,2026-01-26,,,
▶ Crest Mechanical (1 items)
,crest-installation,Crest Installation,scheduled,2026-01-27,2026-01-27,"finish-trim, kitchen-baseboard, finish-electrical, propane, install-stainless-wall, upper-cabinet-install, crest-prep","finish-plumbing, finish-electrical-8, kitchen-put-back, kitchen-put-back-1, project-finish",Need to confirm exact delivery time and duration for install.
▶ Danny (6 items)
,install-doors,Install Doors,needs-scheduled,,,finish-trim,painting-4,
,install-doors-1,  ↳ Main Kitchen Door,needs-scheduled,,,,,1. Hinges to be delivered 1/22. 2. Door is in the garage.
,install-doors-2,  ↳ Install Back Door,needs-scheduled,,,,finish-drywall-3,1. Door is in the garage. 2. Install with Antique Bronze hinges. 3. Install existing antique bronze electronic deadbolt and door knob provided by owner.
,install-doors-3,  ↳ HVAC Door,needs-scheduled,,,,,"1. Install existing 32"" door with jamb. 2. Same casing as main kitchen door."
,build-back-deck,Build Back Deck with Ramp,needs-scheduled,,,remove-old-porch,,"Need to sort out details for dimensions, rail system vs. no rail system, etc. REQUEST: GC meet with owner to plan."
,remove-old-porch,Remove Old Porch Steps and Posts,needs-scheduled,,,,build-back-deck,
▶ Dave (2 items)
,project-finish-2,  ↳ Final Punch Walkthrough,needs-scheduled,,,,,Owner walks job with GC to identify any remaining items. Document all punch items.
,project-finish-5,  ↳ Final Acceptance,needs-scheduled,,,,,Owner confirms all punch items resolved. Project complete.
▶ Dion Cahoon (16 items)
,finish-electrical-1,  ↳ Move Receptacle Over Mop Sink,needs-scheduled,2026-01-26,2026-01-26,,,Move to left of hand sink.
,finish-electrical-2,  ↳ Install Coach Lamp,needs-scheduled,2026-01-26,2026-01-26,,,
,finish-electrical-3,  ↳ Install Receptacle for Light Strings,needs-scheduled,2026-01-26,2026-01-26,,,For light strings that criss-cross to firepit.
,finish-electrical-4,  ↳ Add Receptacle for TV Over Passthrough,needs-scheduled,2026-01-26,2026-01-26,,,
,finish-electrical-5,  ↳ Finish Lighting Install,needs-scheduled,2026-01-26,2026-01-26,,,
,finish-electrical-8,  ↳ Connect Passthrough Heat Lamp,needs-scheduled,2026-01-26,2026-01-26,crest-installation,,Must be done after Crest installation. Heat lamp is part of passthrough equipment.
,propane-1,  ↳ Install Propane Line for Gas Range,needs-scheduled,2026-01-23,2026-01-23,,,1. Installed in secure box in wall to right of existing stainless steel wall covering. 2. Must be installed before remaining stainless is installed on Friday 1/23.
,finish-drywall,Finish Drywall,scheduled,2026-01-22,2026-01-22,framing,painting,
,finish-drywall-1,  ↳ Finish Drywall Kitchen,scheduled,2026-01-22,2026-01-22,framing,painting-1,
,finish-drywall-2,  ↳ Finish Drywall Scupernong,scheduled,2026-01-22,2026-01-22,,"finish-trim-6, painting-2",
,finish-drywall-3,  ↳ Finish drywall around back door,scheduled,2026-01-22,2026-01-22,install-doors-2,,
,finish-drywall-4,  ↳ Drywall patch two light holes in Scupernong,scheduled,2026-01-22,2026-01-22,,painting-2,
,kitchen-put-back-1,  ↳ Install Dishwasher,needs-scheduled,,,"crest-installation, finish-plumbing",,
,framing,Framing,scheduled,2026-01-22,2026-01-22,,"finish-drywall, finish-drywall-1","Hallway opening height: 89 1/2"" for both openings (kitchen-to-pantry and pantry-to-back-door)"
,framing-1,  ↳ Adjust kitchen to pantry hallway opening,scheduled,2026-01-22,2026-01-22,,,
,framing-2,  ↳ Adjust pantry to back door hallway opening,scheduled,2026-01-22,2026-01-22,,,
▶ Eliseo (14 items)
,finish-trim,Finish Trim,in-progress,2026-01-23,2026-01-24,painting,"install-doors, crest-prep, crest-installation, kitchen-baseboard, upper-cabinet-install","Trim joints should be finished with Bondo for wood, not wood filler and definitely not caulk."
,finish-trim-1,  ↳ Trim Passthrough,scheduled,2026-01-23,2026-01-24,,,"1. Casing must be same thickness all around for equipment install. 
2. Inside casing is 3/4"". 
3. Outside casing is 1/2"" - need to plane 3/4"" to 1/2"" (Dave to provide planer). 
4. Trim height is 35 7/8"" - can be cut to 30"" to fit opening. Kat to reach out to Crest Mechanical. 
5. Opening width is 47 3/4"" - can be trimmed for tighter fit (site opening is 49"")."
,finish-trim-2,  ↳ Adjust Hallway Opening Heights,scheduled,2026-01-23,2026-01-24,,,"1. Kitchen to storage: 4 1/2"" from ceiling in small storage room to finished opening height. 
2. Storage to back door: 4 1/2"" from ceiling from pantry side to finished opening height. 
3. Locations marked in pencil on openings, left side at top."
,finish-trim-3,  ↳ Kitchen Crown Molding,scheduled,2026-01-23,2026-01-24,painting-1,,"1. Need to figure out how to handle the sagging joist (Can handle it by floating the ceiling from chase to the dip over the door.) 
2. Registers in laundry and storage room may be too low for crown molding. 
3. Need to verify once crown is on site. 
4. HVAC can be scheduled for 1/22 or 1/23 - confirmed we cannot adjust the registers ourselves from Joclar & Fields."
,finish-trim-4,  ↳ Laundry Crown Molding,scheduled,2026-01-23,2026-01-24,,,
,finish-trim-5,  ↳ Kitchen Main Door Casing,scheduled,2026-01-23,2026-01-24,,,"1. Light switch is so close to casing - need to case around light switch. 2. Need reveal on door casing (currently flush) - reveal should match standard reveal (e.g., match windows reveal)."
,finish-trim-6,  ↳ Install Baseboard in Scupernong,scheduled,2026-01-23,2026-01-24,"finish-drywall-2, painting-2",,Requires Scupernong drywall and paint complete first.
,finish-trim-7,  ↳ Change header trim over triple window to match other window,scheduled,2026-01-23,2026-01-24,,,
,painting,Painting,scheduled,2026-01-23,2026-01-23,finish-drywall,"finish-trim, kitchen-baseboard",
,painting-1,  ↳ Paint Kitchen,scheduled,2026-01-23,2026-01-23,finish-drywall-1,finish-trim-3,Requires finish-drywall-1 complete first.
,painting-2,  ↳ Paint Scupernong,scheduled,2026-01-23,2026-01-23,"finish-drywall-2, finish-drywall-4",finish-trim-6,Requires finish-drywall-2 complete first.
,painting-3,  ↳ Paint Lobby Passthrough Wall,needs-scheduled,2026-01-23,2026-01-23,,,
,painting-4,"  ↳ Paint Doors (Kitchen Main, Back, HVAC)",needs-scheduled,2026-01-23,2026-01-23,install-doors,,Paint after door installation (1/24). 3 doors total.
,painting-5,  ↳ Touch Up Ceiling Damage (as needed),needs-scheduled,2026-01-23,2026-01-23,,,
▶ JD Fletcher (1 items)
,install-stainless-wall,Install Stainless Wall Covering (Right of Range),scheduled,2026-01-23,2026-01-23,propane,crest-installation,Cannot be before Dion finishes range propane install.
▶ Jerum (2 items)
,kitchen-baseboard,Kitchen Baseboard,scheduled,2026-01-26,2026-01-26,"finish-trim, painting","crest-prep, crest-installation",Must be complete before Crest install on 1/27.
,kitchen-baseboard-2,  ↳ Baseboard Install,needs-scheduled,2026-01-26,2026-01-26,,,
▶ Joclar & Fields (2 items)
,hvac-registers,HVAC Lower Registers,cancelled,2026-01-22,2026-01-22,,,Registers in laundry and storage room may be too low for crown molding. Also available 1/23 if needed.
,hvac-finish,Schedule HVAC Finish,needs-scheduled
▶ Sergio (2 items)
,siding,Siding,needs-scheduled,,,propane,,
,siding-2,  ↳ Siding,needs-scheduled
▶ Unassigned (14 items)
,crest-prep,Crest Prep / Cleaning,needs-scheduled,2026-01-26,2026-01-26,"kitchen-baseboard, upper-cabinet-install, finish-trim",crest-installation,"Clean and prep kitchen area before Crest arrives. Clear tools and materials, protect flooring."
,propane,Propane,scheduled,2026-01-23,2026-01-23,,"crest-installation, install-stainless-wall, siding",Dave coordinating and responsible. Dependency for siding install.
,kitchen-put-back,Kitchen Put-Back,needs-scheduled,,,"crest-installation, finish-plumbing",project-finish,
,kitchen-put-back-2,  ↳ Install Ovens,needs-scheduled
,kitchen-put-back-3,"  ↳ Move Range, Freezers and Refrigerators",needs-scheduled
,install-dryer-vents,Install Dryer Vents,needs-scheduled,,,,,Cut holes from laundry room to outside for dryer vents.
,misc-equipment-install,Misc Equipment Install,needs-scheduled
,misc-equipment-install-1,  ↳ Install Pot Rack,needs-scheduled
,misc-equipment-install-2,  ↳ Install Retractable Extension Cord,needs-scheduled
,upper-cabinet-install,Upper Cabinet Install,scheduled,2026-01-26,2026-01-26,finish-trim,"crest-prep, crest-installation",Requires cabinet crown installation.
,upper-cabinet-install-1,  ↳ Upper Cabinet Delivery,confirmed,2026-01-22,2026-01-22,,,
,upper-cabinet-install-3,  ↳ Install Upper Cabinets,needs-scheduled,2026-01-26,2026-01-26,,,
,project-finish,Project Finish,needs-scheduled,,,"inspection, crest-installation, kitchen-put-back, close-permit",,"Final punch acceptance criteria: All work complete per contract scope, all inspections passed, all equipment operational, no safety hazards, cosmetic defects documented and remediated."
,install-hvac-registers,Install HVAC Registers,needs-scheduled,,,,,Need to check with Chad if he's providing and installing these
